# AudioSynth

Schedule from GanttProject, 2012-10-24 to 2012-12-02.
Womprats

## Calendars

- Project calendar: Mon-Sun working.

## Resources

| Resource |
| --- |
| Jackson |
| Bradon |
| Kevin |
| Andy |

## Schedule

| ID | Task | Duration | Start | Finish | Predecessors | Resources |
| --- | --- | --- | --- | --- | --- | --- |
| 1 | Layout Board | 2d | 2012-11-06 | 2012-11-07 | 2, 5, 11, 13 | Jackson; Bradon; Andy |
| 2 | Make Footprints | 2d | 2012-11-04 | 2012-11-05 | 5, 11, 13 | Jackson; Bradon; Andy |
| 3 | CAM Files Sent to Sunstone | 1d | 2012-11-11 | 2012-11-11 | 4 | Bradon |
| 4 | Verify Layout | 3d | 2012-11-08 | 2012-11-10 | 1 | Andy |
| 5 | Verify Audio Amp Design | 1d | 2012-11-03 | 2012-11-03 | 10 |  |
| 6 | Verify Audio Amp Works | 5d | 2012-11-22 | 2012-11-26 | 8, 16 |  |
| 7 | Write UI Driver | 14d | 2012-11-03 | 2012-11-16 | 10, 11, 13 | Kevin |
| 8 | Write Synth Core | 14d | 2012-11-04 | 2012-11-17 | 5, 13 | Jackson [50%]; Bradon |
| 9 | Write EEPROM Driver | 14d | 2012-11-03 | 2012-11-16 | 10, 13 | Andy |
| 10 | Layout and Fab audio amp circuit | 5d | 2012-10-29 | 2012-11-02 |  | Jackson; Bradon |
| 11 | Verify LCD Backlight Design | 1d | 2012-11-02 | 2012-11-02 |  | Kevin |
| 12 | Design LCD Daughterboard | 5d | 2012-11-03 | 2012-11-07 | 11 | Kevin |
| 13 | Schematic Design Review | 4d | 2012-10-24 | 2012-10-27 |  | Andy |
| 14 | Bring Up Board | 1d | 2012-11-27 | 2012-11-27 | 6, 15, 16, 17, 18, 19 |  |
| 15 | Verify PSU Works | 3d | 2012-11-22 | 2012-11-24 | 16 | Jackson |
| 16 | Receive Boards | 10d | 2012-11-12 | 2012-11-21 | 3 |  |
| 17 | Verify LCD Works | 5d | 2012-11-22 | 2012-11-26 | 7, 16 | Kevin |
| 18 | Verify EEPROM Works | 5d | 2012-11-22 | 2012-11-26 | 9, 10, 16 | Andy |
| 19 | Verify Channels Work | 5d | 2012-11-22 | 2012-11-26 | 8, 16 | Bradon |
| 20 | Software Written | 1d | 2012-11-28 | 2012-11-28 | 5, 7, 8, 9, 11, 14 | Jackson; Bradon; Andy |
| 21 | Project Done | 1d | 2012-12-02 | 2012-12-02 | 14, 20, 22 | Jackson; Bradon; Kevin; Andy |
| 22 | Build Enclosure | 3d | 2012-11-29 | 2012-12-01 | 13, 20 | Jackson; Bradon |
